# Cronograma de Execução - TORRE02_ESTRUTURA

Schedule from an IFC model, 2025-01-07 to 2029-01-11.
0001

## Schedule

| ID | Activity | Duration | Start | Finish |
| --- | --- | --- | --- | --- |
| 1 | **Cronograma de Execução do Projeto** | 1466d | 2025-01-07 | 2029-01-11 |
| 1.1 | **Estruturas** | 1388d | 2025-03-26 | 2029-01-11 |
| 1.1.1 | **TORRE 02** | 922d | 2025-04-03 | 2027-10-11 |
| 1.1.1.1 | **Fundação - SUB 02** | 14d | 2025-04-03 | 2025-04-16 |
| 1.1.1.1.1 | Perfuração para alocar as estacas - SUB 02 | 8d | 2025-04-03 | 2025-04-10 |
| 1.1.1.1.2 | Instalação das grades de armação das estacas e bloco de fundação - SUB 02 | 5d | 2025-04-11 | 2025-04-15 |
| 1.1.1.1.3 | Concretagem das estacas e blocos de fundação - SUB 02 | 1d | 2025-04-16 | 2025-04-16 |
| 1.1.1.2 | **Subsolo 2** | 42d | 2026-07-11 | 2026-08-21 |
| 1.1.1.2.1 | **Laje - SUB 02** | 4d | 2026-07-11 | 2026-07-14 |
| 1.1.1.2.1.1 | Execução de formas de laje - SUB 02 | 1d | 2026-07-11 | 2026-07-11 |
| 1.1.1.2.1.2 | Execução e posicionamento de armaduras de laje - SUB 02 | 2d | 2026-07-12 | 2026-07-13 |
| 1.1.1.2.1.3 | Concretagem de laje - SUB 02 | 1d | 2026-07-14 | 2026-07-14 |
| 1.1.1.2.2 | **Pilares - SUB 02** | 8d | 2026-07-14 | 2026-07-21 |
| 1.1.1.2.2.1 | Execução de formas de pilares - SUB 02 | 5d | 2026-07-16 | 2026-07-20 |
| 1.1.1.2.2.2 | Execução e posicionamento de armaduras de pilares - SUB 02 | 2d | 2026-07-14 | 2026-07-15 |
| 1.1.1.2.2.3 | Concretagem de pilares - SUB 02 | 1d | 2026-07-21 | 2026-07-21 |
| 1.1.1.2.3 | **Vigas - SUB 02** | 9d | 2026-07-29 | 2026-08-06 |
| 1.1.1.2.3.1 | Execução de formas de vigas - SUB 02 | 5d | 2026-07-29 | 2026-08-02 |
| 1.1.1.2.3.2 | Execução e posicionamento de armaduras de vigas - SUB 02 | 3d | 2026-08-03 | 2026-08-05 |
| 1.1.1.2.3.3 | Concretagem de vigas - SUB 02 | 1d | 2026-08-06 | 2026-08-06 |
| 1.1.1.2.4 | **Paredes de Contenção - SUB 02** | 7d | 2026-07-22 | 2026-07-28 |
| 1.1.1.2.4.1 | Execução de formas e escoramento de parede de contenção - SUB 02 | 5d | 2026-07-22 | 2026-07-26 |
| 1.1.1.2.4.2 | Execução e posicionamento de armaduras de pares de contenção - SUB 02 | 1d | 2026-07-27 | 2026-07-27 |
| 1.1.1.2.4.3 | Concretagem da parede de contenção - SUB 02 | 1d | 2026-07-28 | 2026-07-28 |

| ID | Activity | Duration | Start | Finish |
| --- | --- | --- | --- | --- |
| 1.1.1.3 | **Subsolo 1** | 58d | 2026-08-07 | 2026-10-03 |
| 1.1.1.3.1 | **Laje - SUB 01** | 4d | 2026-08-07 | 2026-08-10 |
| 1.1.1.3.1.1 | Execução de formas de laje - SUB 01 | 1d | 2026-08-07 | 2026-08-07 |
| 1.1.1.3.1.2 | Execução e posicionamento de armaduras de laje - SUB 01 | 2d | 2026-08-08 | 2026-08-09 |
| 1.1.1.3.1.3 | Concretagem de laje - SUB 01 | 1d | 2026-08-10 | 2026-08-10 |
| 1.1.1.3.2 | **Pilares - SUB 01** | 8d | 2026-08-22 | 2026-08-29 |
| 1.1.1.3.2.1 | Execução de formas de pilares - SUB 01 | 5d | 2026-08-24 | 2026-08-28 |
| 1.1.1.3.2.2 | Execução e posicionamento de armaduras de pilares - SUB 01 | 2d | 2026-08-22 | 2026-08-23 |
| 1.1.1.3.2.3 | Concretagem de pilares - SUB 01 | 1d | 2026-08-29 | 2026-08-29 |
| 1.1.1.3.3 | **Vigas - SUB 01** | 9d | 2026-09-10 | 2026-09-18 |
| 1.1.1.3.3.1 | Execução de formas de vigas - SUB 01 | 5d | 2026-09-10 | 2026-09-14 |
| 1.1.1.3.3.2 | Execução e posicionamento de armaduras de vigas - SUB 01 | 3d | 2026-09-15 | 2026-09-17 |
| 1.1.1.3.3.3 | Concretagem de vigas - SUB 01 | 1d | 2026-09-18 | 2026-09-18 |
| 1.1.1.3.4 | **Paredes de Contenção - SUB 01** | 11d | 2026-08-30 | 2026-09-09 |
| 1.1.1.3.4.1 | Execução de formas e escoramento de parede de contenção - SUB 01 | 5d | 2026-08-30 | 2026-09-03 |
| 1.1.1.3.4.2 | Execução e posicionamento de armaduras de pares de contenção - SUB 01 | 5d | 2026-09-04 | 2026-09-08 |
| 1.1.1.3.4.3 | Concretagem da parede de contenção - SUB 01 | 1d | 2026-09-09 | 2026-09-09 |
| 1.1.1.4 | **Térreo** | 32d | 2026-09-19 | 2026-10-20 |
| 1.1.1.4.1 | **Laje - TÉRREO** | 4d | 2026-09-19 | 2026-09-22 |
| 1.1.1.4.1.1 | Execução de formas de laje - TÉRREO | 1d | 2026-09-19 | 2026-09-19 |
| 1.1.1.4.1.2 | Execução e posicionamento de armaduras de laje - TÉRREO | 2d | 2026-09-20 | 2026-09-21 |
| 1.1.1.4.1.3 | Concretagem de laje - TÉRREO | 1d | 2026-09-22 | 2026-09-22 |
| 1.1.1.4.2 | **Pilares - TÉRREO** | 8d | 2026-10-04 | 2026-10-11 |
| 1.1.1.4.2.1 | Execução de formas de pilares - TÉRREO | 5d | 2026-10-06 | 2026-10-10 |
| 1.1.1.4.2.2 | Execução e posicionamento de armaduras de pilares - TÉRREO | 2d | 2026-10-04 | 2026-10-05 |
| 1.1.1.4.2.3 | Concretagem de pilares - TÉRREO | 1d | 2026-10-11 | 2026-10-11 |

| ID | Activity | Duration | Start | Finish |
| --- | --- | --- | --- | --- |
| 1.1.1.4.3 | **Vigas - TÉRREO** | 9d | 2026-10-12 | 2026-10-20 |
| 1.1.1.4.3.1 | Execução de formas de vigas - TÉRREO | 5d | 2026-10-12 | 2026-10-16 |
| 1.1.1.4.3.2 | Execução e posicionamento de armaduras de vigas - TÉRREO | 3d | 2026-10-17 | 2026-10-19 |
| 1.1.1.4.3.3 | Concretagem de vigas - TÉRREO | 1d | 2026-10-20 | 2026-10-20 |
| 1.1.1.5 | **Pavimento 1** | 21d | 2026-10-21 | 2026-11-10 |
| 1.1.1.5.1 | **Laje - PAV 01** | 4d | 2026-10-21 | 2026-10-24 |
| 1.1.1.5.1.1 | Execução de formas de laje - PAV 01 | 1d | 2026-10-21 | 2026-10-21 |
| 1.1.1.5.1.2 | Execução e posicionamento de armaduras de laje - PAV 01 | 2d | 2026-10-22 | 2026-10-23 |
| 1.1.1.5.1.3 | Concretagem de laje - PAV 01 | 1d | 2026-10-24 | 2026-10-24 |
| 1.1.1.5.2 | **Pilares - PAV 01** | 8d | 2026-10-25 | 2026-11-01 |
| 1.1.1.5.2.1 | Execução de formas de pilares - PAV 01 | 5d | 2026-10-27 | 2026-10-31 |
| 1.1.1.5.2.2 | Execução e posicionamento de armaduras de pilares - PAV 01 | 2d | 2026-10-25 | 2026-10-26 |
| 1.1.1.5.2.3 | Concretagem de pilares - PAV 01 | 1d | 2026-11-01 | 2026-11-01 |
| 1.1.1.5.3 | **Vigas - PAV 01** | 9d | 2026-11-02 | 2026-11-10 |
| 1.1.1.5.3.1 | Execução de formas de vigas - PAV 01 | 5d | 2026-11-02 | 2026-11-06 |
| 1.1.1.5.3.2 | Execução e posicionamento de armaduras de vigas - PAV 01 | 3d | 2026-11-07 | 2026-11-09 |
| 1.1.1.5.3.3 | Concretagem de vigas - PAV 01 | 1d | 2026-11-10 | 2026-11-10 |
| 1.1.1.6 | **Pavimento 2** | 21d | 2026-11-11 | 2026-12-01 |
| 1.1.1.6.1 | **Laje - PAV 02** | 4d | 2026-11-11 | 2026-11-14 |
| 1.1.1.6.1.1 | Execução de formas de laje - PAV 02 | 1d | 2026-11-11 | 2026-11-11 |
| 1.1.1.6.1.2 | Execução e posicionamento de armaduras de laje - PAV 02 | 2d | 2026-11-12 | 2026-11-13 |
| 1.1.1.6.1.3 | Concretagem de laje - PAV 02 | 1d | 2026-11-14 | 2026-11-14 |
| 1.1.1.6.2 | **Pilares - PAV 02** | 8d | 2026-11-15 | 2026-11-22 |
| 1.1.1.6.2.1 | Execução de formas de pilares - PAV 02 | 5d | 2026-11-17 | 2026-11-21 |
| 1.1.1.6.2.2 | Execução e posicionamento de armaduras de pilares - PAV 02 | 2d | 2026-11-15 | 2026-11-16 |
| 1.1.1.6.2.3 | Concretagem de pilares - PAV 02 | 1d | 2026-11-22 | 2026-11-22 |

| ID | Activity | Duration | Start | Finish |
| --- | --- | --- | --- | --- |
| 1.1.1.6.3 | **Vigas - PAV 02** | 9d | 2026-11-23 | 2026-12-01 |
| 1.1.1.6.3.1 | Execução de formas de vigas - PAV 02 | 5d | 2026-11-23 | 2026-11-27 |
| 1.1.1.6.3.2 | Execução e posicionamento de armaduras de vigas - PAV 02 | 3d | 2026-11-28 | 2026-11-30 |
| 1.1.1.6.3.3 | Concretagem de vigas - PAV 02 | 1d | 2026-12-01 | 2026-12-01 |
| 1.1.1.7 | **Pavimento 3** | 21d | 2026-12-02 | 2026-12-22 |
| 1.1.1.7.1 | **Laje - PAV 03** | 4d | 2026-12-02 | 2026-12-05 |
| 1.1.1.7.1.1 | Execução de formas de laje - PAV 03 | 1d | 2026-12-02 | 2026-12-02 |
| 1.1.1.7.1.2 | Execução e posicionamento de armaduras de laje - PAV 03 | 2d | 2026-12-03 | 2026-12-04 |
| 1.1.1.7.1.3 | Concretagem de laje - PAV 03 | 1d | 2026-12-05 | 2026-12-05 |
| 1.1.1.7.2 | **Pilares - PAV 03** | 8d | 2026-12-06 | 2026-12-13 |
| 1.1.1.7.2.1 | Execução de formas de pilares - PAV 03 | 5d | 2026-12-08 | 2026-12-12 |
| 1.1.1.7.2.2 | Execução e posicionamento de armaduras de pilares - PAV 03 | 2d | 2026-12-06 | 2026-12-07 |
| 1.1.1.7.2.3 | Concretagem de pilares - PAV 03 | 1d | 2026-12-13 | 2026-12-13 |
| 1.1.1.7.3 | **Vigas - PAV 03** | 9d | 2026-12-14 | 2026-12-22 |
| 1.1.1.7.3.1 | Execução de formas de vigas - PAV 03 | 5d | 2026-12-14 | 2026-12-18 |
| 1.1.1.7.3.2 | Execução e posicionamento de armaduras de vigas - PAV 03 | 3d | 2026-12-19 | 2026-12-21 |
| 1.1.1.7.3.3 | Concretagem de vigas - PAV 03 | 1d | 2026-12-22 | 2026-12-22 |
| 1.1.1.8 | **Pavimento 4** | 21d | 2026-12-23 | 2027-01-12 |
| 1.1.1.8.1 | **Laje - PAV 04** | 4d | 2026-12-23 | 2026-12-26 |
| 1.1.1.8.1.1 | Execução de formas de laje - PAV 04 | 1d | 2026-12-23 | 2026-12-23 |
| 1.1.1.8.1.2 | Execução e posicionamento de armaduras de laje - PAV 04 | 2d | 2026-12-24 | 2026-12-25 |
| 1.1.1.8.1.3 | Concretagem de laje - PAV 04 | 1d | 2026-12-26 | 2026-12-26 |
| 1.1.1.8.2 | **Pilares - PAV 04** | 8d | 2026-12-27 | 2027-01-03 |
| 1.1.1.8.2.1 | Execução de formas de pilares - PAV 04 | 5d | 2026-12-29 | 2027-01-02 |
| 1.1.1.8.2.2 | Execução e posicionamento de armaduras de pilares - PAV 04 | 2d | 2026-12-27 | 2026-12-28 |
| 1.1.1.8.2.3 | Concretagem de pilares - PAV 04 | 1d | 2027-01-03 | 2027-01-03 |

| ID | Activity | Duration | Start | Finish |
| --- | --- | --- | --- | --- |
| 1.1.1.8.3 | **Vigas - PAV 04** | 9d | 2027-01-04 | 2027-01-12 |
| 1.1.1.8.3.1 | Execução de formas de vigas - PAV 04 | 5d | 2027-01-04 | 2027-01-08 |
| 1.1.1.8.3.2 | Execução e posicionamento de armaduras de vigas - PAV 04 | 3d | 2027-01-09 | 2027-01-11 |
| 1.1.1.8.3.3 | Concretagem de vigas - PAV 04 | 1d | 2027-01-12 | 2027-01-12 |
| 1.1.1.9 | **Pavimento 5** | 21d | 2027-01-13 | 2027-02-02 |
| 1.1.1.9.1 | **Laje - PAV 05** | 4d | 2027-01-13 | 2027-01-16 |
| 1.1.1.9.1.1 | Execução de formas de laje - PAV 05 | 1d | 2027-01-13 | 2027-01-13 |
| 1.1.1.9.1.2 | Execução e posicionamento de armaduras de laje - PAV 05 | 2d | 2027-01-14 | 2027-01-15 |
| 1.1.1.9.1.3 | Concretagem de laje - PAV 05 | 1d | 2027-01-16 | 2027-01-16 |
| 1.1.1.9.2 | **Pilares - PAV 05** | 8d | 2027-01-17 | 2027-01-24 |
| 1.1.1.9.2.1 | Execução de formas de pilares - PAV 05 | 5d | 2027-01-19 | 2027-01-23 |
| 1.1.1.9.2.2 | Execução e posicionamento de armaduras de pilares - PAV 05 | 2d | 2027-01-17 | 2027-01-18 |
| 1.1.1.9.2.3 | Concretagem de pilares - PAV 05 | 1d | 2027-01-24 | 2027-01-24 |
| 1.1.1.9.3 | **Vigas - PAV 05** | 9d | 2027-01-25 | 2027-02-02 |
| 1.1.1.9.3.1 | Execução de formas de vigas - PAV 05 | 5d | 2027-01-25 | 2027-01-29 |
| 1.1.1.9.3.2 | Execução e posicionamento de armaduras de vigas - PAV 05 | 3d | 2027-01-30 | 2027-02-01 |
| 1.1.1.9.3.3 | Concretagem de vigas - PAV 05 | 1d | 2027-02-02 | 2027-02-02 |
| 1.1.1.10 | **Pavimento 6** | 21d | 2027-02-03 | 2027-02-23 |
| 1.1.1.10.1 | **Laje - PAV 06** | 4d | 2027-02-03 | 2027-02-06 |
| 1.1.1.10.1.1 | Execução de formas de laje - PAV 06 | 1d | 2027-02-03 | 2027-02-03 |
| 1.1.1.10.1.2 | Execução e posicionamento de armaduras de laje - PAV 06 | 2d | 2027-02-04 | 2027-02-05 |
| 1.1.1.10.1.3 | Concretagem de laje - PAV 06 | 1d | 2027-02-06 | 2027-02-06 |
| 1.1.1.10.2 | **Pilares - PAV 06** | 8d | 2027-02-07 | 2027-02-14 |
| 1.1.1.10.2.1 | Execução de formas de pilares - PAV 06 | 5d | 2027-02-09 | 2027-02-13 |
| 1.1.1.10.2.2 | Execução e posicionamento de armaduras de pilares - PAV 06 | 2d | 2027-02-07 | 2027-02-08 |
| 1.1.1.10.2.3 | Concretagem de pilares - PAV 06 | 1d | 2027-02-14 | 2027-02-14 |

| ID | Activity | Duration | Start | Finish |
| --- | --- | --- | --- | --- |
| 1.1.1.10.3 | **Vigas - PAV 06** | 9d | 2027-02-15 | 2027-02-23 |
| 1.1.1.10.3.1 | Execução de formas de vigas - PAV 06 | 5d | 2027-02-15 | 2027-02-19 |
| 1.1.1.10.3.2 | Execução e posicionamento de armaduras de vigas - PAV 06 | 3d | 2027-02-20 | 2027-02-22 |
| 1.1.1.10.3.3 | Concretagem de vigas - PAV 06 | 1d | 2027-02-23 | 2027-02-23 |
| 1.1.1.11 | **Pavimento 7** | 22d | 2027-02-24 | 2027-03-17 |
| 1.1.1.11.1 | **Laje - PAV 07** | 4d | 2027-02-24 | 2027-02-27 |
| 1.1.1.11.1.1 | Execução de formas de laje - PAV 07 | 1d | 2027-02-24 | 2027-02-24 |
| 1.1.1.11.1.2 | Execução e posicionamento de armaduras de laje - PAV 07 | 2d | 2027-02-25 | 2027-02-26 |
| 1.1.1.11.1.3 | Concretagem de laje - PAV 07 | 1d | 2027-02-27 | 2027-02-27 |
| 1.1.1.11.2 | **Pilares - PAV 07** | 9d | 2027-02-28 | 2027-03-08 |
| 1.1.1.11.2.1 | Execução de formas de pilares - PAV 07 | 6d | 2027-03-02 | 2027-03-07 |
| 1.1.1.11.2.2 | Execução e posicionamento de armaduras de pilares - PAV 07 | 2d | 2027-02-28 | 2027-03-01 |
| 1.1.1.11.2.3 | Concretagem de pilares - PAV 07 | 1d | 2027-03-08 | 2027-03-08 |
| 1.1.1.11.3 | **Vigas - PAV 07** | 9d | 2027-03-09 | 2027-03-17 |
| 1.1.1.11.3.1 | Execução de formas de vigas - PAV 07 | 5d | 2027-03-09 | 2027-03-13 |
| 1.1.1.11.3.2 | Execução e posicionamento de armaduras de vigas - PAV 07 | 3d | 2027-03-14 | 2027-03-16 |
| 1.1.1.11.3.3 | Concretagem de vigas - PAV 07 | 1d | 2027-03-17 | 2027-03-17 |
| 1.1.1.12 | **Pavimento 8** | 25d | 2027-03-18 | 2027-04-11 |
| 1.1.1.12.1 | **Laje - PAV 08** | 8d | 2027-03-18 | 2027-03-25 |
| 1.1.1.12.1.1 | Execução de formas de laje - PAV 08 | 5d | 2027-03-18 | 2027-03-22 |
| 1.1.1.12.1.2 | Execução e posicionamento de armaduras de laje - PAV 08 | 2d | 2027-03-23 | 2027-03-24 |
| 1.1.1.12.1.3 | Concretagem de laje - PAV 08 | 1d | 2027-03-25 | 2027-03-25 |
| 1.1.1.12.2 | **Pilares - PAV 08** | 17d | 2027-03-26 | 2027-04-11 |
| 1.1.1.12.2.1 | Execução de formas de pilares - PAV 08 | 5d | 2027-03-28 | 2027-04-01 |
| 1.1.1.12.2.2 | Execução e posicionamento de armaduras de pilares - PAV 08 | 2d | 2027-03-26 | 2027-03-27 |
| 1.1.1.12.2.3 | Concretagem de pilares - PAV 08 | 1d | 2027-04-02 | 2027-04-02 |

| ID | Activity | Duration | Start | Finish |
| --- | --- | --- | --- | --- |
| 1.1.1.12.2.4 | **Vigas - PAV 08** | 9d | 2027-04-03 | 2027-04-11 |
| 1.1.1.12.2.4.1 | Execução de formas de vigas - PAV 08 | 5d | 2027-04-03 | 2027-04-07 |
| 1.1.1.12.2.4.2 | Execução e posicionamento de armaduras de vigas - PAV 08 | 3d | 2027-04-08 | 2027-04-10 |
| 1.1.1.12.2.4.3 | Concretagem de vigas - PAV 08 | 1d | 2027-04-11 | 2027-04-11 |
| 1.1.1.13 | **Pavimento 9** | 25d | 2027-04-12 | 2027-05-06 |
| 1.1.1.13.1 | **Laje - PAV 09** | 8d | 2027-04-12 | 2027-04-19 |
| 1.1.1.13.1.1 | Execução de formas de laje - PAV 09 | 5d | 2027-04-12 | 2027-04-16 |
| 1.1.1.13.1.2 | Execução e posicionamento de armaduras de laje - PAV 09 | 2d | 2027-04-17 | 2027-04-18 |
| 1.1.1.13.1.3 | Concretagem de laje - PAV 09 | 1d | 2027-04-19 | 2027-04-19 |
| 1.1.1.13.2 | **Pilares - PAV 09** | 8d | 2027-04-20 | 2027-04-27 |
| 1.1.1.13.2.1 | Execução de formas de pilares - PAV 09 | 5d | 2027-04-22 | 2027-04-26 |
| 1.1.1.13.2.2 | Execução e posicionamento de armaduras de pilares - PAV 09 | 2d | 2027-04-20 | 2027-04-21 |
| 1.1.1.13.2.3 | Concretagem de pilares - PAV 09 | 1d | 2027-04-27 | 2027-04-27 |
| 1.1.1.13.3 | **Vigas - PAV 09** | 9d | 2027-04-28 | 2027-05-06 |
| 1.1.1.13.3.1 | Execução de formas de vigas - PAV 09 | 5d | 2027-04-28 | 2027-05-02 |
| 1.1.1.13.3.2 | Execução e posicionamento de armaduras de vigas - PAV 09 | 3d | 2027-05-03 | 2027-05-05 |
| 1.1.1.13.3.3 | Concretagem de vigas - PAV 09 | 1d | 2027-05-06 | 2027-05-06 |
| 1.1.1.14 | **Pavimento 10** | 25d | 2027-05-07 | 2027-05-31 |
| 1.1.1.14.1 | **Laje - PAV 10** | 8d | 2027-05-07 | 2027-05-14 |
| 1.1.1.14.1.1 | Execução de formas de laje - PAV 10 | 5d | 2027-05-07 | 2027-05-11 |
| 1.1.1.14.1.2 | Execução e posicionamento de armaduras de laje - PAV 10 | 2d | 2027-05-12 | 2027-05-13 |
| 1.1.1.14.1.3 | Concretagem de laje - PAV 10 | 1d | 2027-05-14 | 2027-05-14 |
| 1.1.1.14.2 | **Pilares - PAV 10** | 8d | 2027-05-15 | 2027-05-22 |
| 1.1.1.14.2.1 | Execução de formas de pilares - PAV 10 | 5d | 2027-05-17 | 2027-05-21 |
| 1.1.1.14.2.2 | Execução e posicionamento de armaduras de pilares - PAV 10 | 2d | 2027-05-15 | 2027-05-16 |
| 1.1.1.14.2.3 | Concretagem de pilares - PAV 10 | 1d | 2027-05-22 | 2027-05-22 |

| ID | Activity | Duration | Start | Finish |
| --- | --- | --- | --- | --- |
| 1.1.1.14.3 | **Vigas - PAV 10** | 9d | 2027-05-23 | 2027-05-31 |
| 1.1.1.14.3.1 | Execução de formas de vigas - PAV 10 | 5d | 2027-05-23 | 2027-05-27 |
| 1.1.1.14.3.2 | Execução e posicionamento de armaduras de vigas - PAV 10 | 3d | 2027-05-28 | 2027-05-30 |
| 1.1.1.14.3.3 | Concretagem de vigas - PAV 10 | 1d | 2027-05-31 | 2027-05-31 |
| 1.1.1.15 | **Pavimento 11** | 25d | 2027-06-01 | 2027-06-25 |
| 1.1.1.15.1 | **Laje - PAV 11** | 8d | 2027-06-01 | 2027-06-08 |
| 1.1.1.15.1.1 | Execução de formas de laje - PAV 11 | 5d | 2027-06-01 | 2027-06-05 |
| 1.1.1.15.1.2 | Execução e posicionamento de armaduras de laje - PAV 11 | 2d | 2027-06-06 | 2027-06-07 |
| 1.1.1.15.1.3 | Concretagem de laje - PAV 11 | 1d | 2027-06-08 | 2027-06-08 |
| 1.1.1.15.2 | **Pilares - PAV 11** | 8d | 2027-06-09 | 2027-06-16 |
| 1.1.1.15.2.1 | Execução de formas de pilares - PAV 11 | 5d | 2027-06-11 | 2027-06-15 |
| 1.1.1.15.2.2 | Execuçãoe posicionamento de armaduras de pilares - PAV 11 | 2d | 2027-06-09 | 2027-06-10 |
| 1.1.1.15.2.3 | Concretagem de pilares - PAV 11 | 1d | 2027-06-16 | 2027-06-16 |
| 1.1.1.15.3 | **Vigas - PAV 11** | 9d | 2027-06-17 | 2027-06-25 |
| 1.1.1.15.3.1 | Execução de formas de vigas - PAV 11 | 5d | 2027-06-17 | 2027-06-21 |
| 1.1.1.15.3.2 | Execução e posicionamento de armaduras de vigas - PAV 11 | 3d | 2027-06-22 | 2027-06-24 |
| 1.1.1.15.3.3 | Concretagem de vigas - PAV 11 | 1d | 2027-06-25 | 2027-06-25 |
| 1.1.1.16 | **Pavimento 12** | 25d | 2027-06-26 | 2027-07-20 |
| 1.1.1.16.1 | **Laje - PAV 12** | 8d | 2027-06-26 | 2027-07-03 |
| 1.1.1.16.1.1 | Execução de formas de laje - PAV 12 | 5d | 2027-06-26 | 2027-06-30 |
| 1.1.1.16.1.2 | Execução e posicionamento de armaduras de laje - PAV 12 | 2d | 2027-07-01 | 2027-07-02 |
| 1.1.1.16.1.3 | Concretagem de laje - PAV 12 | 1d | 2027-07-03 | 2027-07-03 |
| 1.1.1.16.2 | **Pilares - PAV 12** | 8d | 2027-07-04 | 2027-07-11 |
| 1.1.1.16.2.1 | Execução de formas de pilares - PAV 12 | 5d | 2027-07-06 | 2027-07-10 |
| 1.1.1.16.2.2 | Execução e posicionamento de armaduras de pilares - PAV 12 | 2d | 2027-07-04 | 2027-07-05 |
| 1.1.1.16.2.3 | Concretagem de pilares - PAV 12 | 1d | 2027-07-11 | 2027-07-11 |

| ID | Activity | Duration | Start | Finish |
| --- | --- | --- | --- | --- |
| 1.1.1.16.3 | **Vigas - PAV 12** | 9d | 2027-07-12 | 2027-07-20 |
| 1.1.1.16.3.1 | Execução de formas de vigas - PAV 12 | 5d | 2027-07-12 | 2027-07-16 |
| 1.1.1.16.3.2 | Execução e posicionamento de armaduras de vigas - PAV 12 | 3d | 2027-07-17 | 2027-07-19 |
| 1.1.1.16.3.3 | Concretagem de vigas - PAV 12 | 1d | 2027-07-20 | 2027-07-20 |
| 1.1.1.17 | **Pavimento 13** | 25d | 2027-07-21 | 2027-08-14 |
| 1.1.1.17.1 | **Laje - PAV 13** | 8d | 2027-07-21 | 2027-07-28 |
| 1.1.1.17.1.1 | Execução de formas de laje - PAV 13 | 5d | 2027-07-21 | 2027-07-25 |
| 1.1.1.17.1.2 | Execução e posicionamento de armaduras de laje - PAV 13 | 2d | 2027-07-26 | 2027-07-27 |
| 1.1.1.17.1.3 | Concretagem de laje - PAV 13 | 1d | 2027-07-28 | 2027-07-28 |
| 1.1.1.17.2 | **Pilares - PAV 13** | 8d | 2027-07-29 | 2027-08-05 |
| 1.1.1.17.2.1 | Execução de formas de pilares - PAV 13 | 5d | 2027-07-31 | 2027-08-04 |
| 1.1.1.17.2.2 | Execução e posicionamento de armaduras de pilares - PAV 13 | 2d | 2027-07-29 | 2027-07-30 |
| 1.1.1.17.2.3 | Concretagem de pilares - PAV 13 | 1d | 2027-08-05 | 2027-08-05 |
| 1.1.1.17.3 | **Vigas - PAV 13** | 9d | 2027-08-06 | 2027-08-14 |
| 1.1.1.17.3.1 | Execução de formas de vigas - PAV 13 | 5d | 2027-08-06 | 2027-08-10 |
| 1.1.1.17.3.2 | Execução e posicionamento de armaduras de vigas - PAV 13 | 3d | 2027-08-11 | 2027-08-13 |
| 1.1.1.17.3.3 | Concretagem de vigas - PAV 13 | 1d | 2027-08-14 | 2027-08-14 |
| 1.1.1.18 | **Pavimento 14** | 25d | 2027-08-15 | 2027-09-08 |
| 1.1.1.18.1 | **Laje - PAV 14** | 8d | 2027-08-15 | 2027-08-22 |
| 1.1.1.18.1.1 | Execução de formas de laje - PAV 14 | 5d | 2027-08-15 | 2027-08-19 |
| 1.1.1.18.1.2 | Execução e posicionamento de armaduras de laje - PAV 14 | 2d | 2027-08-20 | 2027-08-21 |
| 1.1.1.18.1.3 | Concretagem de laje - PAV 14 | 1d | 2027-08-22 | 2027-08-22 |
| 1.1.1.18.2 | **Pilares - PAV 14** | 8d | 2027-08-23 | 2027-08-30 |
| 1.1.1.18.2.1 | Execução de formas de pilares - PAV 14 | 5d | 2027-08-25 | 2027-08-29 |
| 1.1.1.18.2.2 | Execução e posicionamento de armaduras de pilares - PAV 14 | 2d | 2027-08-23 | 2027-08-24 |
| 1.1.1.18.2.3 | Concretagem de pilares - PAV 14 | 1d | 2027-08-30 | 2027-08-30 |

| ID | Activity | Duration | Start | Finish |
| --- | --- | --- | --- | --- |
| 1.1.1.18.3 | **Vigas - PAV 14** | 9d | 2027-08-31 | 2027-09-08 |
| 1.1.1.18.3.1 | Execução de formas de vigas - PAV 14 | 5d | 2027-08-31 | 2027-09-04 |
| 1.1.1.18.3.2 | Execução e posicionamento de armaduras de vigas - PAV 14 | 3d | 2027-09-05 | 2027-09-07 |
| 1.1.1.18.3.3 | Concretagem de vigas - PAV 14 | 1d | 2027-09-08 | 2027-09-08 |
| 1.1.1.19 | **Pavimento 15** | 25d | 2027-09-09 | 2027-10-03 |
| 1.1.1.19.1 | **Laje - PAV 15** | 8d | 2027-09-09 | 2027-09-16 |
| 1.1.1.19.1.1 | Execução de formas de laje - PAV 15 | 5d | 2027-09-09 | 2027-09-13 |
| 1.1.1.19.1.2 | Execução e posicionamento de armaduras de laje - PAV 15 | 2d | 2027-09-14 | 2027-09-15 |
| 1.1.1.19.1.3 | Concretagem de laje - PAV 15 | 1d | 2027-09-16 | 2027-09-16 |
| 1.1.1.19.2 | **Pilares - PAV 15** | 8d | 2027-09-17 | 2027-09-24 |
| 1.1.1.19.2.1 | Execução de formas de pilares - PAV 15 | 5d | 2027-09-19 | 2027-09-23 |
| 1.1.1.19.2.2 | Execução e posicionamento de armaduras de pilares - PAV 15 | 2d | 2027-09-17 | 2027-09-18 |
| 1.1.1.19.2.3 | Concretagem de pilares - PAV 15 | 1d | 2027-09-24 | 2027-09-24 |
| 1.1.1.19.3 | **Vigas - PAV 15** | 9d | 2027-09-25 | 2027-10-03 |
| 1.1.1.19.3.1 | Execução de formas de vigas - PAV 15 | 5d | 2027-09-25 | 2027-09-29 |
| 1.1.1.19.3.2 | Execução e posicionamento de armaduras de vigas - PAV 15 | 3d | 2027-09-30 | 2027-10-02 |
| 1.1.1.19.3.3 | Concretagem de vigas - PAV 15 | 1d | 2027-10-03 | 2027-10-03 |
| 1.1.1.20 | **Cobertura** | 8d | 2027-10-04 | 2027-10-11 |
| 1.1.1.20.1 | **Laje - COBERTURA** | 8d | 2027-10-04 | 2027-10-11 |
| 1.1.1.20.1.1 | Execução de formas de laje - COBERTURA | 5d | 2027-10-04 | 2027-10-08 |
| 1.1.1.20.1.2 | Execução e posicionamento de armaduras de laje - COBERTURA | 2d | 2027-10-09 | 2027-10-10 |
| 1.1.1.20.1.3 | Concretagem de laje - COBERTURA | 1d | 2027-10-11 | 2027-10-11 |
